# Toll Fee Management_MasterPlan

Schedule from MS Project, 2011-05-09 to 2011-08-22, scheduled back from the finish.

## Calendars

- Standard: Mon-Fri 08:00-12:00, 13:00-17:00; Sat-Sun off.

## Resources

| Resource |
| --- |
| DangTH |
| HieuNX |
| LinhNAN |
| US Team |
| QuanTV |
| VuND |

## Schedule

| ID | WBS | Task | Type | Duration | Start | Finish | Predecessors | Total slack | Free slack | Constraint | Resources | Work |
| --- | --- | --- | --- | --- | --- | --- | --- | --- | --- | --- | --- | --- |
| 1 | 1 | **Toll Fee Management Capstone Project** |  | 76d | 2011-05-09 | 2011-08-22 |  |  |  | as late as possible |  | 976h |
| 2 | 1.1 | **Inception** |  | 11d | 2011-05-09 | 2011-05-23 |  |  |  | as late as possible |  | 176h |
| 3 | 1.1.1 | **Initiation** |  | 1d | 2011-05-23 | 2011-05-23 |  | 10d | 0d | as late as possible |  | 8h |
| 4 | 1.1.1.1 | Prepare register |  | 4h | 2011-05-23 | 2011-05-23 |  | 10d | 0d | as late as possible | LinhNAN | 4h |
| 5 | 1.1.1.2 | Hold Kick off Meeting |  | 4h | 2011-05-23 | 2011-05-23 | 4 | 10d | 0d | as late as possible | US Team | 4h |
| 6 | 1.1.2 | **Researching technologies and algorithm** |  | 6d | 2011-05-09 | 2011-05-16 |  |  |  | as late as possible |  | 80h |
| 7 | 1.1.2.1 | Research existing systems |  | 1d | 2011-05-09 | 2011-05-09 |  | 0d |  | start no later than 2011-05-09 | HieuNX | 8h |
| 8 | 1.1.2.2 | Research algorithm |  | 1d | 2011-05-10 | 2011-05-10 | 7 | 0d |  | start no later than 2011-05-10 | DangTH | 8h |
| 9 | 1.1.2.3 | **Create project demo** |  | 4d | 2011-05-11 | 2011-05-16 |  |  |  | as late as possible |  | 64h |
| 10 | 1.1.2.3.1 | Show and control camera in application |  | 4d | 2011-05-11 | 2011-05-16 | 7 | 1d | 0d | start no later than 2011-05-11 | HieuNX | 32h |
| 11 | 1.1.2.3.2 | Recognized characters and numbers |  | 4d | 2011-05-11 | 2011-05-16 | 8 | 0d |  | as late as possible | DangTH | 32h |
| 12 | 1.1.3 | **Create report No.1** |  | 6d | 2011-05-09 | 2011-05-16 |  |  |  | as late as possible |  | 48h |
| 13 | 1.1.3.1 | Overview existing methods and systems |  | 3d | 2011-05-09 | 2011-05-11 |  | 0d |  | start no later than 2011-05-09 | QuanTV | 24h |
| 14 | 1.1.3.2 | Write background |  | 1d | 2011-05-12 | 2011-05-12 | 13 | 0d |  | start no later than 2011-05-12 | LinhNAN | 8h |
| 15 | 1.1.3.3 | Fix comments |  | 2d | 2011-05-13 | 2011-05-16 | 14 | 0d |  | as late as possible | LinhNAN | 16h |
| 16 | 1.1.3.4 | Submit Report No.1: Project Introduction | milestone | 0d | 2011-05-16 | 2011-05-16 |  | 5d | 0d | start no later than 2011-05-16 |  |  |
| 17 | 1.1.4 | **Develop project plan** |  | 5d | 2011-05-17 | 2011-05-23 |  |  |  | as late as possible |  | 40h |
| 18 | 1.1.4.1 | Team planning meeting |  | 1d? | 2011-05-17 | 2011-05-17 |  | 6d | 0d | start no later than 2011-05-17 | US Team | 8h |
| 19 | 1.1.4.2 | Prepare scope statement and WBS |  | 2d | 2011-05-18 | 2011-05-19 | 18 | 6d | 0d | start no later than 2011-05-18 | LinhNAN | 16h |
| 20 | 1.1.4.3 | Identifying, dicussing, and prioritizing risks |  | 1d? | 2011-05-20 | 2011-05-20 | 19 | 6d | 0d | start no later than 2011-05-20 | US Team | 8h |
| 21 | 1.1.4.4 | Review Project Plan |  | 1d? | 2011-05-23 | 2011-05-23 | 20 | 4d | 0d | as late as possible | LinhNAN | 8h |
| 22 | 1.1.4.5 | Submit report No.2 : Project Plan | milestone | 0d | 2011-05-23 | 2011-05-23 |  | 10d | 0d | start no later than 2011-05-23 |  |  |
| 23 | 1.2 | **Elaboration** |  | 22d | 2011-05-24 | 2011-06-22 |  |  |  | as late as possible |  | 304h |
| 24 | 1.2.1 | **Create Software Requirements Specifications** |  | 9d | 2011-05-24 | 2011-06-03 |  |  |  | as late as possible |  | 120h |
| 25 | 1.2.1.1 | User Requirement Specification |  | 2d | 2011-05-24 | 2011-05-25 |  | 11d | 0d | start no later than 2011-05-24 | QuanTV | 16h |
| 26 | 1.2.1.2 | Compose High level requirements |  | 2d | 2011-05-26 | 2011-05-27 | 25 | 11d | 0d | start no later than 2011-05-26 | LinhNAN | 16h |

| ID | WBS | Task | Type | Duration | Start | Finish | Predecessors | Total slack | Free slack | Constraint | Resources | Work |
| --- | --- | --- | --- | --- | --- | --- | --- | --- | --- | --- | --- | --- |
| 27 | 1.2.1.3 | **Compose Functional Requirements** |  | 3d | 2011-05-30 | 2011-06-01 |  |  |  | as late as possible |  | 48h |
| 28 | 1.2.1.3.1 | Client |  | 3d | 2011-05-30 | 2011-06-01 | 26 | 0d |  | as late as possible | DangTH | 24h |
| 29 | 1.2.1.3.2 | Server |  | 3d | 2011-05-30 | 2011-06-01 | 26 | 0d |  | as late as possible | HieuNX | 24h |
| 30 | 1.2.1.4 | Compose Non-Functional Requirements |  | 3d | 2011-05-30 | 2011-06-01 | 26 | 11d | 0d | start no later than 2011-05-30 | LinhNAN | 24h |
| 31 | 1.2.1.5 | Review SRS |  | 2d | 2011-06-02 | 2011-06-03 |  | 7d | 0d | as late as possible | QuanTV | 16h |
| 32 | 1.2.1.6 | Submit report No.3 Software Requirements Specifications | milestone | 0d | 2011-06-03 | 2011-06-03 |  | 9d | 0d | as late as possible |  |  |
| 33 | 1.2.2 | **Design** |  | 15d | 2011-06-02 | 2011-06-22 |  |  |  | as late as possible |  | 184h |
| 34 | 1.2.2.1 | Database Design |  | 2d | 2011-06-02 | 2011-06-03 | 30 | 13d |  |  | DangTH | 16h |
| 35 | 1.2.2.2 | **System Architecture Design** |  | 3d | 2011-06-06 | 2011-06-08 |  |  |  | as late as possible |  | 56h |
| 36 | 1.2.2.2.1 | Overall architecture design |  | 1d? | 2011-06-06 | 2011-06-06 |  | 20d | 0d | finish no later than 2011-06-06 | LinhNAN | 8h |
| 37 | 1.2.2.2.2 | Client |  | 2d | 2011-06-07 | 2011-06-08 | 36 | 20d | 0d | finish no later than 2011-06-08 | DangTH | 16h |
| 38 | 1.2.2.2.3 | Server |  | 2d | 2011-06-07 | 2011-06-08 | 36 | 20d | 0d | finish no later than 2011-06-08 | HieuNX | 16h |
| 39 | 1.2.2.2.4 | Crawl and synchronize Data |  | 2d | 2011-06-07 | 2011-06-08 | 36 | 20d | 0d | finish no later than 2011-06-08 | QuanTV | 16h |
| 40 | 1.2.2.3 | **Create Code Prototype** |  | 2d | 2011-06-09 | 2011-06-10 | 35 |  |  | as late as possible |  | 48h |
| 41 | 1.2.2.3.1 | Client |  | 2d | 2011-06-09 | 2011-06-10 |  | 0d |  | as late as possible | DangTH | 16h |
| 42 | 1.2.2.3.2 | Server |  | 2d | 2011-06-09 | 2011-06-10 |  | 0d |  | as late as possible | HieuNX | 16h |
| 43 | 1.2.2.3.3 | Crawl and synchronize Data |  | 2d | 2011-06-09 | 2011-06-10 |  | 0d |  | as late as possible | QuanTV | 16h |
| 44 | 1.2.2.4 | Detailed design |  | 8d? | 2011-06-13 | 2011-06-22 | 40 | 0d |  | finish no later than 2011-06-22 | US Team | 64h |
| 45 | 1.2.2.5 | Submit report No.4 Software Design Description (SDD) | milestone | 0d | 2011-06-22 | 2011-06-22 |  | 15d | 0d | as late as possible |  |  |
| 46 | 1.3 | **Construction** |  | 37d | 2011-06-23 | 2011-08-12 |  |  |  | as late as possible |  | 456h |
| 47 | 1.3.1 | **Coding** |  | 27d | 2011-06-23 | 2011-07-29 |  |  |  | as late as possible |  | 376h |
| 48 | 1.3.1.1 | Client Development |  | 12d | 2011-06-23 | 2011-07-08 |  | 33d | 0d | finish no later than 2011-07-10 | US Team | 96h |
| 49 | 1.3.1.2 | Server Development |  | 10d | 2011-07-11 | 2011-07-22 |  | 45d | 0d | start no later than 2011-07-11 | US Team | 80h |
| 50 | 1.3.1.3 | Crawl and synchronize Data Development |  | 5d | 2011-07-25 | 2011-07-29 | 49 | 22d | 0d | as late as possible | LinhNAN; HieuNX; DangTH | 120h |
| 51 | 1.3.1.4 | Create Software User’s Manual (SUM) |  | 5d? | 2011-07-25 | 2011-07-29 | 48, 49 | 40d | 0d | finish no later than 2011-07-29 | VuND; QuanTV | 80h |

| ID | WBS | Task | Type | Duration | Start | Finish | Predecessors | Total slack | Free slack | Constraint | Resources | Work |
| --- | --- | --- | --- | --- | --- | --- | --- | --- | --- | --- | --- | --- |
| 52 | 1.3.2 | **Testing** |  | 8d | 2011-08-01 | 2011-08-10 |  |  |  | as late as possible |  | 64h |
| 53 | 1.3.2.1 | Create Test Plan |  | 1d? | 2011-08-01 | 2011-08-01 |  | 60d | 0d | start no later than 2011-08-01 | VuND | 8h |
| 54 | 1.3.2.2 | Integration Test |  | 2d | 2011-08-02 | 2011-08-03 | 53 | 60d | 0d | finish no later than 2011-08-03 | US Team | 16h |
| 55 | 1.3.2.3 | System Test |  | 3d | 2011-08-04 | 2011-08-08 | 54 | 60d | 0d | finish no later than 2011-08-08 | US Team | 24h |
| 56 | 1.3.2.4 | Create and submit Report No.5 Software Test Documentation (STD) |  | 2d | 2011-08-09 | 2011-08-10 | 55 | 60d | 0d | start no later than 2011-08-09 | VuND | 16h |
| 57 | 1.3.3 | **Deployment** |  | 2d | 2011-08-11 | 2011-08-12 |  |  |  | as late as possible |  | 16h |
| 58 | 1.3.3.1 | Input dummy data |  | 1d? | 2011-08-11 | 2011-08-11 |  | 0d |  |  | US Team | 8h |
| 59 | 1.3.3.2 | Deploy system |  | 1d? | 2011-08-12 | 2011-08-12 | 58 | 0d |  | start no later than 2011-08-12 | US Team | 8h |
| 60 | 1.3.3.3 | Complete Deploy System | milestone | 0d | 2011-08-12 | 2011-08-12 |  | 2d | 0d | as late as possible |  |  |
| 61 | 1.4 | **Transition** |  | 6d | 2011-08-15 | 2011-08-22 |  |  |  | as late as possible |  | 40h |
| 62 | 1.4.1 | **Preclosing** |  | 4d | 2011-08-15 | 2011-08-18 |  |  |  | as late as possible |  | 32h |
| 63 | 1.4.1.1 | Complete program and documents |  | 4d | 2011-08-15 | 2011-08-18 |  | 0d |  |  | US Team | 32h |
| 64 | 1.4.1.2 | Submit the last Document and CD source code | milestone | 0d | 2011-08-18 | 2011-08-18 | 63 | 0d |  |  |  |  |
| 65 | 1.4.2 | **Closing** |  | 1d | 2011-08-22 | 2011-08-22 | 64 |  |  | as late as possible |  | 8h |
| 66 | 1.4.2.1 | Represent Capstone Project |  | 1d? | 2011-08-22 | 2011-08-22 |  | 75d | 0d | finish no later than 2011-08-22 | US Team | 8h |
| 67 | 1.4.2.2 | Project completed | milestone | 0d | 2011-08-22 | 2011-08-22 |  | 75d | 0d | start no later than 2011-08-22 |  |  |
